# Software Biblioteca

Schedule from MS Project, 2018-04-09 to 2018-07-11, 2 hours a day, costs in €, A marks actual dates.

## Calendars

- Standard: Mon-Tue 13:30-15:30; Wed 09:00-12:30; Thu-Sun off. Exceptions (off unless hours are given): 2018-04-11 (não trabalhamos).

## Resources

| Resource | Group | Rate |
| --- | --- | --- |
| Flávio | RH | 5 |
| André | RH | 5 |
| Carlota | RH | 5 |
| Rodrigo | RH | 5 |

## Schedule

| ID | WBS | Task | Type | Duration | Start | Finish | Predecessors | Complete | Remaining | Total slack | Free slack | Constraint | Resources | Work | Actual work | Cost | Actual cost | Acção |
| --- | --- | --- | --- | --- | --- | --- | --- | --- | --- | --- | --- | --- | --- | --- | --- | --- | --- | --- |
| 1 | 1 | **Planeamento** |  | 8.5d | 2018-04-09 08:00 A | 2018-04-25 10:30 |  | 71% | 2.47d | 0d |  |  |  | 28.77h | 22.62h | 143.83 | 113.1 |  |
| 2 | 1.1 | Microsoft Project |  | 17h | 2018-04-09 13:30 A | 2018-04-25 10:30 |  | 47% | 9h | 0d |  | start no earlier than 2018-04-09 08:00 | Flávio [70%]; André [7%] | 7.87h | 5.17h | 39.33 | 25.85 | mais tempo |
| 3 | 1.2 | **Relatório Requisitos** |  | 6.75d | 2018-04-09 08:00 A | 2018-04-23 15:30 |  | 84% | 1.08d | 1.75d |  |  |  | 14.9h | 11.85h | 74.5 | 59.25 |  |
| 4 | 1.2.1 | Investigação no terreno |  | 0.5h | 2018-04-09 13:30 A | 2018-04-09 14:00 A |  | 100% |  |  |  |  | Flávio | 0.5h | 0.5h | 2.5 | 2.5 |  |
| 5 | 1.2.2 | Introdução |  | 5h | 2018-04-09 08:00 A | 2018-04-16 14:30 | 4 | 90% | 0.5h | 7d |  |  | André [40%]; Flávio [60%] | 4h | 3.8h | 20 | 19 |  |
| 6 | 1.2.3 | Requisitos Funcionais |  | 9h | 2018-04-10 13:30 A | 2018-04-18 10:00 | 4 | 95% | 0.45h | 4d | 1.25d | start no earlier than 2018-04-10 08:00 | André [60%]; Flávio [40%] | 7.5h | 7.05h | 37.5 | 35.25 | mais rh e mais tempo |
| 7 | 1.2.4 | Requisitos Não Funcionais |  | 2h | 2018-04-18 08:00 A | 2018-04-18 11:30 A | 4 | 100% |  |  |  | start no earlier than 2018-04-18 08:00 | André [90%]; Flávio [10%] | 0.5h | 0.5h | 2.5 | 2.5 |  |
| 8 | 1.2.5 | Diagrama Casos de Uso |  | 2h | 2018-04-23 13:30 | 2018-04-23 15:30 | 6, 7 |  |  | 2.75d |  | start no earlier than 2018-04-23 08:00 | André; Flávio [10%]; Rodrigo [10%] | 2.4h |  | 12 |  |  |
| 9 | 1.3 | **Relatório Planeamento** |  | 2.75d | 2018-04-17 08:00 A | 2018-04-18 12:30 |  | 94% | 0.16d | 2.75d |  |  |  | 6h | 5.6h | 30 | 28 |  |
| 10 | 1.3.1 | Planificação Geral do Projeto |  | 2h | 2018-04-18 09:00 A | 2018-04-18 11:00 |  | 80% | 0.4h | 4.5d |  | start no earlier than 2018-04-18 08:00 | André [50%]; Flávio [50%] | 2h | 1.6h | 10 | 8 | mais rh |
| 11 | 1.3.2 | Plano de riscos |  | 3h | 2018-04-18 09:30 A | 2018-04-18 12:30 |  | 99% | 0h | 3.75d |  | start no earlier than 2018-04-18 08:00 | Flávio [50%]; André [50%]; Rodrigo [20%] | 2h | 2h | 10 | 10 | mais rh e mais tempo |
| 12 | 1.3.3 | Matriz de Responsabilidades |  | 2h | 2018-04-17 08:00 A | 2018-04-17 17:00 A |  | 100% |  |  |  | start no earlier than 2018-04-17 08:00 | Flávio [90%]; André [10%] | 2h | 2h | 10 | 10 |  |
| 13 | 1.4 | Conclusão do planeamento | milestone | 0d | 2018-04-25 10:30 | 2018-04-25 10:30 | 2, 3, 9 |  |  | 0d |  |  |  |  |  |  |  |  |
| 14 | 2 | **Sprint 1** |  | 24.5d | 2018-04-09 08:00 | 2018-05-23 12:30 |  |  |  | 0d |  |  |  | 94h |  | 470 |  |  |
| 15 | 2.1 | **Java** |  | 24.5d | 2018-04-09 08:00 | 2018-05-23 12:30 |  |  |  | 0d |  |  |  | 36h |  | 180 |  |  |
| 16 | 2.1.1 | Registo de Alunos |  | 4h | 2018-04-30 13:30 | 2018-05-01 15:30 | 1 |  |  | 0d |  | start no earlier than 2018-04-30 08:00 | Carlota [50%]; Rodrigo [50%] | 4h |  | 20 |  |  |
| 17 | 2.1.2 | Leitura de Alunos |  | 2h | 2018-05-02 09:00 | 2018-05-02 11:00 | 16 |  |  | 1d | 0d |  | Carlota [50%]; Rodrigo [50%] | 2h |  | 10 |  |  |
| 18 | 2.1.3 | Edição de Alunos |  | 4h | 2018-05-02 11:00 | 2018-05-08 14:00 | 17 |  |  | 1d |  |  | Carlota [50%]; Rodrigo [50%] | 4h |  | 20 |  |  |
| 19 | 2.1.4 | Registo de Livros |  | 2h | 2018-05-02 09:00 | 2018-05-02 11:00 | 16 |  |  | 0d |  |  | Carlota [50%]; Rodrigo [50%] | 2h |  | 10 |  |  |
| 20 | 2.1.5 | Leitura de Livros |  | 2h | 2018-05-02 11:00 | 2018-05-07 14:00 | 19 |  |  | 0d |  |  | Carlota [50%]; Rodrigo [50%] | 2h |  | 10 |  |  |
| 21 | 2.1.6 | Edição de Livros |  | 4h | 2018-05-07 14:00 | 2018-05-09 09:30 | 20 |  |  | 0d |  |  | Carlota [50%]; Rodrigo [50%] | 4h |  | 20 |  |  |
| 22 | 2.1.7 | registo de requisições |  | 3h | 2018-05-09 09:30 | 2018-05-09 12:30 | 21, 18 |  |  | 0d |  |  | Carlota [50%]; Rodrigo [50%] | 3h |  | 15 |  | mais rh |
| 23 | 2.1.8 | Devolução de livros |  | 3h | 2018-05-14 13:30 | 2018-05-15 14:30 | 22 |  |  | 0d |  |  | Carlota [50%]; Rodrigo [50%] | 3h |  | 15 |  | mais rh |
| 24 | 2.1.9 | Edição de requisições |  | 4h | 2018-05-15 14:30 | 2018-05-16 12:00 | 23 |  |  | 0d |  |  | Carlota [50%]; Rodrigo [50%] | 4h |  | 20 |  |  |
| 25 | 2.1.10 | pesquisa de requisições por aluno |  | 4h | 2018-05-16 12:00 | 2018-05-22 15:00 | 24 |  |  | 0d |  |  | Carlota [50%]; Rodrigo [50%] | 4h |  | 20 |  |  |
| 26 | 2.1.11 | pesquisa de requisições por livro |  | 4h | 2018-05-22 15:00 | 2018-05-23 12:30 | 25 |  |  | 0d |  | start no earlier than 2018-05-08 08:00 | Carlota [50%]; Rodrigo [50%] | 4h |  | 20 |  |  |
| 27 | 2.1.12 | Pesquisar cada tabela por qualquer campo | milestone | 0h | 2018-04-09 08:00 | 2018-04-09 08:00 |  |  |  | 25.5d |  |  | Carlota [50%]; Rodrigo [50%] |  |  |  |  |  |

| ID | WBS | Task | Type | Duration | Start | Finish | Predecessors | Total slack | Free slack | Constraint | Resources | Work | Cost | Acção |
| --- | --- | --- | --- | --- | --- | --- | --- | --- | --- | --- | --- | --- | --- | --- |
| 28 | 2.2 | **Javafx** |  | 16d | 2018-04-25 10:30 | 2018-05-23 12:30 |  | 0d |  |  |  | 58h | 290 |  |
| 29 | 2.2.1 | **scene principal** |  | 16d | 2018-04-25 10:30 | 2018-05-23 12:30 |  | 0d |  |  |  | 58h | 290 |  |
| 30 | 2.2.1.1 | registo de alunos |  | 2h | 2018-04-30 13:30 | 2018-04-30 15:30 | 1 | 6d | 0d | start no earlier than 2018-04-30 08:00 | André [50%]; Flávio [50%] | 2h | 10 | mais rh |
| 31 | 2.2.1.2 | Leitura de Alunos |  | 2h | 2018-05-01 13:30 | 2018-05-01 15:30 | 30 | 6d | 0d |  | André [50%]; Flávio [50%] | 2h | 10 | mais rh |
| 32 | 2.2.1.3 | Edição de Alunos |  | 2d | 2018-05-02 09:00 | 2018-05-07 14:00 | 31 | 6d | 0d |  | André [50%]; Flávio [50%] | 4h | 20 |  |
| 33 | 2.2.1.4 | Janela de Informação | milestone, manual | 0d | 2018-04-25 10:30 | 2018-04-25 12:30 | 1 |  |  |  | André [50%]; Flávio [50%] | 2h | 10 |  |
| 34 | 2.2.1.5 | Registo de Livros |  | 2h | 2018-04-25 10:30 | 2018-04-25 12:30 | 1 | 0d |  |  | André [50%]; Flávio [50%] | 2h | 10 | mais rh |
| 35 | 2.2.1.6 | Leitura de Livros |  | 2h | 2018-04-30 13:30 | 2018-04-30 15:30 | 34 | 0d |  |  | André [50%]; Flávio [50%] | 2h | 10 | mais rh |
| 36 | 2.2.1.7 | Edição de Livros |  | 2d | 2018-05-01 13:30 | 2018-05-02 11:00 | 35 | 7d | 1d |  | André [50%]; Flávio [50%] | 4h | 20 |  |
| 37 | 2.2.1.8 | Registo de requisições |  | 2d | 2018-05-07 14:00 | 2018-05-09 09:30 | 32, 36 | 6d | 0d |  | André [50%]; Flávio [50%] | 4h | 20 | mais rh e mais tempo |
| 38 | 2.2.1.9 | Devolução de requisições |  | 2d | 2018-05-09 09:30 | 2018-05-14 14:30 | 37 | 6d | 0d |  | André [50%]; Flávio [50%] | 4h | 20 |  |
| 39 | 2.2.1.10 | Edição de requisições |  | 2d | 2018-05-14 14:30 | 2018-05-16 10:00 | 38 | 6d |  |  | André [50%]; Flávio [50%] | 4h | 20 |  |
| 40 | 2.2.1.11 | pesquisa de requisitos por aluno |  | 2h | 2018-05-01 13:30 | 2018-05-01 15:30 | 35 | 0d |  |  | André [50%]; Flávio [50%] | 2h | 10 |  |
| 41 | 2.2.1.12 | pesquisa de requisitos por livro |  | 2h | 2018-05-02 09:00 | 2018-05-02 11:00 | 40 | 0d |  |  | André [50%]; Flávio [50%] | 2h | 10 |  |
| 42 | 2.2.1.13 | Pesquisar qualquer tabela por qualquer campo |  | 24h | 2018-05-02 11:00 | 2018-05-23 12:30 | 41 | 0d |  |  | André [50%]; Flávio [50%] | 24h | 120 |  |
| 43 | 2.3 | Reunião 22/5 | manual | 2h | 2018-05-22 08:00 | 2018-05-22 10:00 |  |  |  |  |  |  |  |  |
| 44 | 2.4 | Conclusão Sprint 1 | milestone | 0d | 2018-05-23 12:30 | 2018-05-23 12:30 | 43, 15, 28 | 0d |  |  |  |  |  |  |
| 45 | 3 | **Sprint 2** |  | 14d | 2018-05-28 13:30 | 2018-06-20 10:30 |  | 0d |  |  |  | 68h | 340 |  |
| 46 | 3.1 | **Java** |  | 14d | 2018-05-28 13:30 | 2018-06-20 10:30 |  | 0d |  |  |  | 34h | 170 |  |
| 47 | 3.1.1 | **Save/load** |  | 8d | 2018-05-28 13:30 | 2018-06-11 14:30 |  | 0d |  |  |  | 16h | 80 |  |
| 48 | 3.1.1.1 | SaveState .bin |  | 8h | 2018-05-28 13:30 | 2018-06-04 14:00 | 44 | 0d |  |  | Carlota [50%]; Rodrigo [50%] | 8h | 40 | mais rh |
| 49 | 3.1.1.2 | Auto-saveState .bin |  | 2h | 2018-06-04 14:00 | 2018-06-05 14:00 | 48 | 0d |  |  | Carlota [50%]; Rodrigo [50%] | 2h | 10 | mais rh |
| 50 | 3.1.1.3 | LoadState .bin |  | 2h | 2018-06-05 14:00 | 2018-06-06 09:30 | 49 | 0d |  |  | Carlota [50%]; Rodrigo [50%] | 2h | 10 | mais rh |
| 51 | 3.1.1.4 | Importar Tabela .csv |  | 2h | 2018-06-06 09:30 | 2018-06-06 11:30 | 50 | 0d |  |  | Carlota [50%]; Rodrigo [50%] | 2h | 10 |  |
| 52 | 3.1.1.5 | Exportar Tabela .csv |  | 2h | 2018-06-06 11:30 | 2018-06-11 14:30 | 51 | 0d |  |  | Carlota [50%]; Rodrigo [50%] | 2h | 10 |  |
| 53 | 3.1.2 | Login |  | 2h | 2018-05-28 13:30 | 2018-05-28 15:30 | 44 | 5d | 0d |  | Carlota [50%]; Rodrigo [50%] | 2h | 10 | mais rh |
| 54 | 3.1.3 | Registo de administradores |  | 2h | 2018-05-29 13:30 | 2018-05-29 15:30 | 53 | 5d | 0d |  | Carlota [50%]; Rodrigo [50%] | 2h | 10 | mais rh |
| 55 | 3.1.4 | Leitura de lista de administradores |  | 2h | 2018-05-30 09:00 | 2018-05-30 11:00 | 54 | 5d |  |  | Carlota [50%]; Rodrigo [50%] | 2h | 10 | mais rh |
| 56 | 3.1.5 | bloquear falta de permissões |  | 12h | 2018-06-11 14:30 | 2018-06-20 10:30 | 54, 47, 53, 55 | 0d |  |  | André [25%]; Carlota [25%]; Flávio [25%]; Rodrigo [25%] | 12h | 60 | mais rh e mais tempo |

| ID | WBS | Task | Type | Duration | Start | Finish | Predecessors | Total slack | Free slack | Constraint | Resources | Work | Cost | Acção |
| --- | --- | --- | --- | --- | --- | --- | --- | --- | --- | --- | --- | --- | --- | --- |
| 57 | 3.2 | **Javafx** |  | 12d | 2018-05-28 13:30 | 2018-06-18 15:00 |  | 2d |  |  |  | 34h | 170 |  |
| 58 | 3.2.1 | **save/load** |  | 6d | 2018-05-28 13:30 | 2018-06-06 09:30 |  | 2d | 0d |  |  | 12h | 60 |  |
| 59 | 3.2.1.1 | Save state .bin |  | 3h | 2018-05-28 13:30 | 2018-05-29 14:30 | 44 | 2d | 0d |  | André [50%]; Flávio [50%] | 3h | 15 |  |
| 60 | 3.2.1.2 | load state .bin |  | 3h | 2018-05-29 14:30 | 2018-05-30 11:00 | 59 | 2d | 0d |  | André [50%]; Flávio [50%] | 3h | 15 |  |
| 61 | 3.2.1.3 | importar tabelas .csv |  | 3h | 2018-05-30 11:00 | 2018-06-04 15:00 | 60 | 2d | 0d |  | André [50%]; Flávio [50%] | 3h | 15 |  |
| 62 | 3.2.1.4 | exportar tabelas .csv |  | 3h | 2018-06-04 15:00 | 2018-06-06 09:30 | 61 | 2d |  |  | André [50%]; Flávio [50%] | 3h | 15 |  |
| 63 | 3.2.2 | bloquear falta de permissões |  | 12h | 2018-06-06 09:30 | 2018-06-18 15:00 | 66, 58 | 2d |  |  | André [50%]; Flávio [50%] | 12h | 60 | mais rh e mais tempo |
| 64 | 3.2.3 | Ocultar colunas nas pesquisas a pedido do utilizador |  | 8h | 2018-05-28 13:30 | 2018-06-04 14:00 | 42 | 10d |  |  | André [50%]; Flávio [50%] | 8h | 40 |  |
| 65 | 3.2.4 | **scene de login** |  | 1d | 2018-05-28 13:30 | 2018-05-28 15:30 |  | 7d |  |  |  | 2h | 10 |  |
| 66 | 3.2.4.1 | Login |  | 2h | 2018-05-28 13:30 | 2018-05-28 15:30 | 44 | 7d | 5d |  | André [50%]; Flávio [50%] | 2h | 10 | mais tempo |
| 67 | 3.3 | Reunião 12/6 | manual | 4d | 2018-06-12 08:00 | 2018-06-12 16:00 |  |  |  |  |  |  |  |  |
| 68 | 3.4 | Conclusão sprint 2 | milestone | 0d | 2018-06-20 10:30 | 2018-06-20 10:30 | 67, 46, 57 | 0d |  |  |  |  |  |  |
| 69 | 4 | Conclusão do projeto |  | 12d | 2018-06-20 10:30 | 2018-07-11 12:00 | 68 | 0d |  | finish no earlier than 2018-06-16 17:00 |  |  |  |  |
